# スケジュール_TWLSystemMenu

Schedule from MS Project, 2008-02-08 to 2008-07-10, A marks actual dates.
莉ｻ螟ｩ蝣よｪ蠑丈ｼ夂､ｾ

## Calendars

- 年中無休: Mon-Sun 08:00-12:00, 13:00-17:00.

## Resources

| Resource | Group |
| --- | --- |
| 宮本昌幸 | RED |
| 大江徹 | RED |
| 中島高伸 | RED |
| 吉岡照幸 | RED |
| 村上豊 | RED |
| 白井達広 | RED |
| 神川洋司 | RED |
| 佐藤雅樹 | RED |
| 三田健太朗 | RED |
| 水口裕基 | RED |
| 赤羽淳平 | RED |
| 西川猛司 | RED |
| 吉田光寿 | RED |
| 喜友名毅 | RED-HARD |
| 安達 洋明 | PSEG1 |
| 稲葉 公崇 | PSEG1 |
| 大島 洋一 | PSEG1 |
| 岡島 学 | PSEG1 |
| 奥畑 亮馬 | PSEG1 |
| 北瀬 裕丈 | PSEG1 |
| 白川 英一 | PSEG1 |
| 清木 昌 | PSEG1 |
| 照井 章生 | PSEG1 |
| 徳永 英治 | PSEG1 |
| 西本 隆 | PSEG1 |
| 橋本 英之 | PSEG1 |
| 畠本 稔 | PSEG1 |
| 廣瀬 和樹 | PSEG1 |
| 安本 吉孝 | PSEG1 |
| 矢田 裕人 | PSEG1 |
| 吉崎 浩二 | PSEG1 |
| Atheros | Atheros |
| BroadOn | BroadOn |
| 遠藤高志 | PSEG2 |
| 松島愛佑 | ＵＩＧ |
| 荒木 勉 | ＵＩＧ |
| 川瀬 智広 | ＵＩＧ |
| 河野裕之 | ＵＩＧ |
| 小野沢祐貴 | ＵＩＧ |
| ネットワーク開発部 | ネ開 |
| 斉藤潤一 | RED-HARD |
| 藤田僚平 |  |
| 総務部 |  |
| 和田 |  |
| 中谷 |  |
| 知財部 |  |
| 桑原雅人 | RED-HARD |
| ？ |  |
| 正木義文 | ＵＩＧ |
| Buffalo外注 |  |
| NEC外注 |  |
| 製品技術部 |  |
| 田原明 |  |

## Schedule

| ID | WBS | Task | Type | Duration | Start | Finish | Complete | Remaining | Total slack | Free slack | Constraint | Resources | Work | Actual work |
| --- | --- | --- | --- | --- | --- | --- | --- | --- | --- | --- | --- | --- | --- | --- |
| 1 | 1 | **TS-board 3 納品開始** |  | 30d | 2008-02-13 | 2008-03-13 |  |  | 119d |  |  |  |  |  |
| 2 | 1.1 | 先行20台 | milestone | 1d | 2008-02-13 | 2008-02-13 |  |  | 148d |  | start no earlier than 2008-02-13 |  |  |  |
| 3 | 1.2 | 480台(BO:12/170/298) | milestone | 1d | 2008-03-13 | 2008-03-13 |  |  | 119d |  | start no earlier than 2008-03-13 |  |  |  |
| 4 | 2 | ワーキングモデル(10台 BO:0/7/3)納品予定 | milestone | 1d? | 2008-02-15 A | 2008-02-15 A | 100% |  |  |  | start no earlier than 2008-02-15 |  |  |  |
| 5 | 3 | **IS-TWL-DEBUGGER納品開始** |  | 121d | 2008-03-03 A | 2008-07-01 | 20% | 96.8d | 9d |  |  |  |  |  |
| 6 | 3.1 | 先行5台 | milestone | 1d | 2008-03-03 A | 2008-03-03 A | 100% |  |  |  | start no earlier than 2008-03-03 |  |  |  |
| 7 | 3.2 | 第一弾100台 | milestone | 1d | 2008-04-14 | 2008-04-14 |  |  | 87d | 16d | start no earlier than 2008-04-14 |  |  |  |
| 8 | 3.3 | 第二弾200台 | milestone | 1d | 2008-05-05 | 2008-05-05 |  |  | 66d |  | start no earlier than 2008-05-05 |  |  |  |
| 9 | 3.4 | 第三弾300台 | milestone | 1d | 2008-06-02 | 2008-06-02 |  |  | 38d |  | start no earlier than 2008-06-02 |  |  |  |
| 10 | 3.5 | 月産500台 | milestone | 1d | 2008-07-01 | 2008-07-01 |  |  | 9d |  | start no earlier than 2008-07-01 |  |  |  |
| 11 | 4 | **量産試作納品開始** |  | 93d | 2008-04-09 A | 2008-07-10 | 25% | 69.75d | 0d |  |  |  |  |  |
| 12 | 4.1 | ミニ量試200台 | milestone | 1d | 2008-04-09 A | 2008-04-09 A | 100% |  |  |  | start no earlier than 2008-04-09 |  |  |  |
| 13 | 4.2 | 量試1 600台 | milestone | 1d | 2008-05-01 | 2008-05-01 |  |  | 70d |  | start no earlier than 2008-05-01 |  |  |  |
| 14 | 4.3 | 量試2 600台 | milestone | 1d | 2008-06-04 | 2008-06-04 |  |  | 36d | 0d | start no earlier than 2008-06-04 |  |  |  |
| 15 | 4.4 | 量試3 600台 | milestone | 1d | 2008-07-10 | 2008-07-10 |  |  | 0d |  | start no earlier than 2008-07-10 |  |  |  |
| 16 | 5 | IS-TWL-CAPTURE試作品納品開始 | milestone | 1d? | 2008-04-01 | 2008-04-01 |  |  | 100d |  | start no earlier than 2008-04-01 |  |  |  |
| 18 | 6 | **REDランチャー開発マイルストーン** |  | 66d | 2008-02-08 | 2008-04-13 |  |  | 88d |  |  |  |  |  |
| 19 | 6.1 | スタート | milestone | 1d | 2008-02-08 | 2008-02-08 |  |  | 90d | 2d | start no earlier than 2008-02-08 |  |  |  |
| 20 | 6.2 | 第1ステップ（2月末） | milestone | 1d | 2008-03-02 | 2008-03-02 |  |  | 103d | 0d | start no earlier than 2008-03-02 |  |  |  |
| 21 | 6.3 | 第2ステップ（3月中旬） | milestone | 1d | 2008-03-16 | 2008-03-16 |  |  | 110d | 0d | start no earlier than 2008-03-16 |  |  |  |
| 22 | 6.4 | 第3ステップ（3月末） | milestone | 1d | 2008-03-30 | 2008-03-30 |  |  | 102d | 0d | start no earlier than 2008-03-30 |  |  |  |
| 23 | 6.5 | 第4ステップ | milestone | 1d | 2008-04-06 | 2008-04-06 |  |  | 95d |  | start no earlier than 2008-04-06 |  |  |  |
| 24 | 6.6 | 第5ステップ | milestone | 1d | 2008-04-13 | 2008-04-13 |  |  | 88d |  | start no earlier than 2008-04-13 |  |  |  |
| 27 | 7 | **仕様策定** |  | 70d? | 2008-02-08 A | 2008-04-17 | 63% | 25.92d? | 84d |  |  |  | 9240h | 5752.8h |
| 28 | 7.1 | **ランチャー** |  | 70d? | 2008-02-08 A | 2008-04-17 | 53% | 33d? | 84d |  |  |  | 7144h | 3727.2h |
| 29 | 7.1.1 | アプリのNintendoロゴ表示 |  | 8d | 2008-02-11 A | 2008-02-20 A | 100% |  |  |  | finish no earlier than 2008-02-20 | 松島愛佑; 三田健太朗; 知財部 | 192h | 192h |

Notes:
- 24: システムメニューデバッグ開始目標日

| ID | WBS | Task | Duration | Start | Finish | Predecessors | Complete | Remaining | Total slack | Free slack | Constraint | Resources | Work | Actual work |
| --- | --- | --- | --- | --- | --- | --- | --- | --- | --- | --- | --- | --- | --- | --- |
| 30 | 7.1.2 | **EURA表示** | 61d | 2008-02-11 | 2008-04-11 |  |  |  | 88d |  |  |  | 1080h |  |
| 31 | 7.1.2.1 | NCL Fix | 25d | 2008-02-11 | 2008-03-16 | 19, 20SF |  |  | 88d | 0d | finish no earlier than 2008-03-16 | 三田健太朗; 総務部; 松島愛佑 | 600h |  |
| 32 | 7.1.2.2 | NOA, NOE承認 | 20d | 2008-03-17 | 2008-04-11 | 31, 22SF |  |  | 88d |  | start no earlier than 2008-02-08 | 三田健太朗; 総務部; 松島愛佑 | 480h |  |
| 33 | 7.1.3 | **ペアレンタルコントロール** | 70d? | 2008-02-08 A | 2008-04-17 |  | 13% | 61.08d? | 84d |  |  |  | 1128h | 115.2h |
| 34 | 7.1.3.1 | 通信方式や通信内容に対する制限 | 50d? | 2008-02-08 | 2008-04-17 |  |  |  | 84d |  | start no earlier than 2008-02-08 | 三田健太朗 | 400h |  |
| 35 | 7.1.3.2 | レーティング以外の制御 | 16d | 2008-02-08 A | 2008-02-29 |  | 90% | 1.6d | 97d | 2d |  | 松島愛佑 | 128h | 115.2h |
| 36 | 7.1.3.3 | 秘密の質問項目 | 22d? | 2008-02-08 | 2008-02-29 |  |  |  | 132d |  | start no earlier than 2008-02-08 |  |  |  |
| 37 | 7.1.3.4 | NOA,NOE承認 | 25d? | 2008-03-03 | 2008-04-06 | 35 |  |  | 95d |  | finish no earlier than 2008-04-06 | 三田健太朗; 総務部; 松島愛佑 | 600h |  |
| 38 | 7.1.4 | **本体設定データ** | 54d | 2008-02-11 A | 2008-04-04 |  | 96% | 2.08d | 97d |  |  |  | 920h | 860h |
| 39 | 7.1.4.1 | ペアレンタルコントロール（レーティング以外のデータ構造） | 25d | 2008-02-11 A | 2008-03-16 | 19, 20SF | 90% | 2.5d | 116d |  | finish no earlier than 2008-03-16 | 松島愛佑; 総務部; 三田健太朗 | 600h | 540h |
| 40 | 7.1.4.2 | 顔写真 | 40d | 2008-02-11 A | 2008-04-04 A | 19, 20SF | 100% |  |  |  | start no earlier than 2008-02-08 | 正木義文 | 320h | 320h |
| 41 | 7.1.5 | **NANDファイルアクセス制限** | 34d? | 2008-02-11 A | 2008-03-16 |  | 69% | 10.42d? | 117d |  |  |  | 1096h | 760h |
| 42 | 7.1.5.1 | 同一メーカの他タイトルのセーブデータ（ReadOnly） | 25d | 2008-02-11 A | 2008-03-16 A | 19, 21SF | 100% |  |  |  | finish no earlier than 2008-02-29 | 吉岡照幸 | 200h | 200h |
| 43 | 7.1.5.2 | TMPブートをする際のTMPブートアプリファイル（RW） | 25d | 2008-02-11 A | 2008-03-16 A | 19, 21SF | 100% |  |  |  | start no earlier than 2008-02-08 | 吉岡照幸 | 200h | 200h |
| 44 | 7.1.5.3 | フォントの共有コンテンツ化（ReadOnly） | 25d | 2008-02-11 | 2008-03-16 | 19, 21SF |  |  | 116d |  | start no earlier than 2008-02-08 | 吉岡照幸 | 200h |  |
| 45 | 7.1.5.4 | ESライブラリのほぼ全部アクセス | 25d | 2008-02-11 A | 2008-03-16 A | 19, 21SF | 100% |  |  |  | start no earlier than 2008-02-08 | 吉岡照幸 | 200h | 200h |
| 46 | 7.1.5.5 | 本体設定データ（ReadOnly） | 25d | 2008-02-11 A | 2008-03-16 | 19, 21SF | 80% | 5d | 117d |  | start no earlier than 2008-02-08 | 吉岡照幸 | 200h | 160h |
| 47 | 7.1.5.6 | shared2の運用方針 | 12d? | 2008-02-14 | 2008-02-29 |  |  |  | 132d |  | finish no earlier than 2008-02-29 | 吉岡照幸 | 96h |  |
| 48 | 7.1.6 | **SDに作成するフォルダ名** | 37d? | 2008-02-08 A | 2008-03-16 |  | 39% | 22.56d? | 117d |  |  |  | 448h | 248h |
| 49 | 7.1.6.1 | TWL正式名称を使えるかを確認 | 25d | 2008-02-11 | 2008-03-16 | 19, 21SF |  |  | 116d |  | start no earlier than 2008-02-08 | 三田健太朗 | 200h |  |
| 50 | 7.1.6.2 | パス名調査 | 1d? | 2008-02-08 A | 2008-02-08 A |  | 100% |  |  |  |  | 白井達広 | 8h | 8h |
| 51 | 7.1.6.3 | TWLでのフォルダ構成のたたき台 | 15d | 2008-02-11 A | 2008-03-02 A | 19, 20SF | 100% |  |  |  | start no earlier than 2008-02-08 | 三田健太朗; 吉岡照幸 | 240h | 240h |
| 52 | 7.1.7 | **NTRアプリのR4対策** | 59d | 2008-02-11 | 2008-04-09 |  |  |  | 92d |  |  |  | 344h |  |
| 53 | 7.1.7.1 | どのレベルでやるかの方針決定 | 43d | 2008-02-11 | 2008-04-09 | 19, 20SF |  |  | 92d |  | start no earlier than 2008-02-11 | ？ | 344h |  |

| ID | WBS | Task | Duration | Start | Finish | Predecessors | Complete | Remaining | Total slack | Constraint | Resources | Work | Actual work |
| --- | --- | --- | --- | --- | --- | --- | --- | --- | --- | --- | --- | --- | --- |
| 54 | 7.1.8 | **アプリジャンプ** | 64d? | 2008-02-08 A | 2008-04-11 |  | 49% | 32.48d? | 90d |  |  | 752h | 370.4h |
| 55 | 7.1.8.1 | 仕様案策定 | 19d? | 2008-02-08 A | 2008-03-05 A |  | 100% |  |  | finish no earlier than 2008-03-05 | 吉岡照幸 | 152h | 152h |
| 56 | 7.1.8.2 | 仕様案アンケート | 4d | 2008-03-06 A | 2008-03-11 A | 55 | 100% |  |  | start no earlier than 2008-03-06 | 三田健太朗 | 32h | 32h |
| 57 | 7.1.8.3 | 仕様FIX | 23d | 2008-03-12 A | 2008-04-11 | 56 | 10% | 20.7d | 90d | finish no earlier than 2008-04-11 | 吉岡照幸 | 184h | 18.4h |
| 58 | 7.1.8.4 | ファイル関連付けアプリ起動をやるかやらないか？ | 15d | 2008-02-11 A | 2008-03-02 A | 19, 20SF | 100% |  |  |  | 吉岡照幸 | 120h | 120h |
| 59 | 7.1.8.5 | TMPブート、メモリブートのNTRアプリ対応 | 5d? | 2008-02-18 A | 2008-02-22 A |  | 100% |  |  | start no earlier than 2008-02-18 | 吉岡照幸 | 40h | 40h |
| 60 | 7.1.8.6 | NTRモード移行後のHWリセットでは、アプリジャンプを無効にする仕組み | 1d? | 2008-02-08 A | 2008-02-08 A |  | 100% |  |  |  | 吉岡照幸 | 8h | 8h |
| 61 | 7.1.8.7 | 特許調査 | 27d? | 2008-03-06 | 2008-04-11 |  |  |  | 90d | finish no earlier than 2008-04-11 | 知財部 | 216h |  |
| 62 | 7.1.9 | **バナー仕様** | 8d | 2008-02-08 A | 2008-02-15 A |  | 100% |  |  |  |  | 288h | 288h |
| 63 | 7.1.9.1 | TWLバナー | 6d | 2008-02-08 A | 2008-02-15 A | 19, 21SF | 100% |  |  |  | 吉岡照幸; 川瀬 智広; 荒木 勉 | 144h | 144h |
| 64 | 7.1.9.2 | サブバナー | 6d | 2008-02-08 A | 2008-02-15 A | 19, 21SF | 100% |  |  |  | 吉岡照幸; 川瀬 智広; 荒木 勉 | 144h | 144h |
| 65 | 7.1.10 | **バックライト輝度の値、段階** | 22d? | 2008-02-08 A | 2008-02-29 A |  | 100% |  |  |  |  | 344h | 344h |
| 66 | 7.1.10.1 | 上限、下限決定 | 9d | 2008-02-08 A | 2008-02-20 A |  | 100% |  |  | start no earlier than 2008-02-08 | 斉藤潤一; 喜友名毅 | 144h | 144h |
| 67 | 7.1.10.2 | 段階数、各輝度レベル決定 | 9d | 2008-02-08 A | 2008-02-20 A |  | 100% |  |  | start no earlier than 2008-02-08 | 斉藤潤一; 喜友名毅 | 144h | 144h |
| 68 | 7.1.10.3 | UIG承認 | 7d? | 2008-02-21 A | 2008-02-29 A | 66, 67 | 100% |  |  | start no earlier than 2008-02-21 | 松島愛佑 | 56h | 56h |
| 69 | 7.1.11 | **バッテリエクステンション** | 50d? | 2008-02-08 A | 2008-03-28 A |  | 100% |  |  |  |  | 288h | 288h |
| 70 | 7.1.11.1 | データ測定 | 21d? | 2008-02-08 A | 2008-03-09 A |  | 100% |  |  | finish no earlier than 2008-03-09 | 藤田僚平 | 168h | 168h |
| 71 | 7.1.11.2 | 仕様策定 | 15d | 2008-03-10 A | 2008-03-28 A | 70 | 100% |  |  | finish no earlier than 2008-02-29 | 桑原雅人 | 120h | 120h |
| 72 | 7.1.12 | **電源LED変化** | 11d? | 2008-04-01 A | 2008-04-11 |  | 96% | 0.41d? | 90d |  |  | 120h | 117.6h |
| 73 | 7.1.12.1 | 仕様決定 | 1d? | 2008-04-01 A | 2008-04-11 | 71 | 70% | 0.3d? | 90d | finish no earlier than 2008-04-11 | 桑原雅人 | 8h | 5.6h |
| 74 | 7.1.12.2 | 実装 | 7d? | 2008-04-01 A | 2008-04-09 A |  | 100% |  |  | finish no earlier than 2008-04-09 | 村上豊; 藤田僚平 | 112h | 112h |
| 75 | 7.1.13 | 鍵の引渡し | 18d? | 2008-03-06 A | 2008-03-31 A |  | 100% |  |  | finish no earlier than 2008-03-10 | 吉岡照幸 | 144h | 144h |
| 76 | 7.2 | **eTicket** | 39d? | 2008-02-08 A | 2008-03-17 |  | 97% | 1.28d? | 115d |  |  | 584h | 564.8h |
| 77 | 7.2.1 | 鍵管理 | 21d? | 2008-02-08 A | 2008-03-07 A |  | 100% |  |  | start no earlier than 2008-02-08 | 廣瀬 和樹 | 168h | 168h |
| 78 | 7.2.2 | TitleID | 21d? | 2008-02-08 A | 2008-03-07 A |  | 100% |  |  | start no earlier than 2008-02-08 | 廣瀬 和樹 | 168h | 168h |

| ID | WBS | Task | Duration | Start | Finish | Predecessors | Complete | Remaining | Total slack | Constraint | Resources | Work | Actual work |
| --- | --- | --- | --- | --- | --- | --- | --- | --- | --- | --- | --- | --- | --- |
| 79 | 7.2.3 | **ネットワークアップデート** | 29d? | 2008-02-18 A | 2008-03-17 |  | 92% | 2.25d? | 115d |  |  | 248h | 228.8h |
| 80 | 7.2.3.1 | ゲームバージョンの運用方法 | 12d? | 2008-02-18 A | 2008-03-04 |  | 80% | 2.4d? | 128d | start no earlier than 2008-02-18 | 廣瀬 和樹 | 96h | 76.8h |
| 81 | 7.2.3.2 | ACアダプタを差した状態でNUPしたらシャットダウンしない保証があるか調査 | 19d? | 2008-02-20 A | 2008-03-17 A |  | 100% |  |  | finish no earlier than 2008-03-07 | 斉藤潤一 | 152h | 152h |
| 82 | 7.3 | **無線** | 62d? | 2008-02-08 A | 2008-04-09 |  | 99% | 0.36d? | 92d |  |  | 1472h | 1460.8h |
| 83 | 7.3.1 | **WiFi設定** | 0.5d? | 2008-02-08 A | 2008-02-08 |  | 30% | 0.35d? | 153.5d |  |  | 16h | 4.8h |
| 84 | 7.3.1.1 | WiFi設定移行ルーチン仕様 | 0.5d? | 2008-02-08 A | 2008-02-08 |  | 30% | 0.35d? | 153.5d |  | 水口裕基; ネットワーク開発部 | 8h | 2.4h |
| 85 | 7.3.1.2 | MTUなどの設定項目仕様 | 0.5d? | 2008-02-08 A | 2008-02-08 |  | 30% | 0.35d? | 153.5d |  | 水口裕基; ネットワーク開発部 | 8h | 2.4h |
| 86 | 7.3.2 | WiFiエミュレーション | 21d | 2008-02-08 A | 2008-03-07 A | 19, 20SF | 100% |  |  |  | 大江徹; 水口裕基 | 336h | 336h |
| 87 | 7.3.3 | ファームロード | 21d? | 2008-02-08 A | 2008-03-07 A |  | 100% |  |  |  | 大江徹; 佐藤雅樹 | 336h | 336h |
| 88 | 7.3.4 | 無線終端処理 | 21d? | 2008-02-08 A | 2008-03-07 A |  | 100% |  |  |  | 大江徹; 佐藤雅樹 | 336h | 336h |
| 89 | 7.3.5 | フライトモード | 28d? | 2008-03-03 A | 2008-04-09 A |  | 100% |  |  |  | 大江徹 | 224h | 224h |
| 90 | 7.3.6 | 無線LED制御 | 28d? | 2008-03-03 A | 2008-04-09 A |  | 100% |  |  |  | 大江徹 | 224h | 224h |
| 91 | 7.4 | **ISデバッガ** | 1d? | 2008-02-08 | 2008-02-08 |  |  |  | 153d |  |  | 40h |  |
| 92 | 7.4.1 | 開発マイルストーンをまとめる | 1d? | 2008-02-08 | 2008-02-08 |  |  |  | 153d |  | ？ | 8h |  |
| 93 | 7.4.2 | 開発用カード、製品用カード動作をどのように対応するか？ | 1d? | 2008-02-08 | 2008-02-08 |  |  |  | 153d |  | ？ | 8h |  |
| 94 | 7.4.3 | デバッガ、キャプチャで、開発用SRL、製品用SRLをどのように動作させるか？ | 1d? | 2008-02-08 | 2008-02-08 |  |  |  | 153d |  | ？ | 8h |  |
| 95 | 7.4.4 | システムアップデートをどのようにサポートするか？ | 1d? | 2008-02-08 | 2008-02-08 |  |  |  | 153d |  | ？ | 8h |  |
| 96 | 7.4.5 | NANDアプリインポート方法（NMenuのみに制限？） | 1d? | 2008-02-08 | 2008-02-08 |  |  |  | 153d |  | ？ | 8h |  |
| 98 | 8 | **X4ボード対応** | 31d | 2008-03-03 A | 2008-04-02 A |  | 100% |  |  |  |  | 1104h | 1104h |
| 99 | 8.1 | ランチャー | 23d | 2008-03-03 A | 2008-04-02 A | 19, 20SF | 100% |  |  | finish no earlier than 2008-02-18 | 中島高伸; 吉田光寿; 吉岡照幸 | 552h | 552h |
| 100 | 8.2 | ISデバッガ | 23d | 2008-03-03 A | 2008-04-02 A | 19, 20SF | 100% |  |  | finish no earlier than 2008-02-18 | 中島高伸; 吉田光寿; 吉岡照幸 | 552h | 552h |
| 102 | 9 | **REDシステムメニュー** | 83d? | 2008-02-08 A | 2008-04-30 |  | 75% | 20.98d? | 71d |  |  | 9808h | 7261.6h |
| 103 | 9.1 | **ランチャー** | 83d? | 2008-02-08 A | 2008-04-30 |  | 74% | 21.33d? | 71d |  |  | 9496h | 6975.2h |
| 104 | 9.1.1 | ランチャー用ARM7コンポーネント | 25d | 2008-02-11 A | 2008-03-16 | 19, 21SF | 50% | 12.5d | 117d | start no earlier than 2008-02-08 | 吉岡照幸 | 200h | 100h |

| ID | WBS | Task | Duration | Start | Finish | Predecessors | Complete | Remaining | Total slack | Constraint | Resources | Work | Actual work |
| --- | --- | --- | --- | --- | --- | --- | --- | --- | --- | --- | --- | --- | --- |
| 105 | 9.1.2 | **アプリ起動** | 71d? | 2008-02-08 A | 2008-04-18 |  | 78% | 15.38d? | 83d |  |  | 3280h | 2543.2h |
| 106 | 9.1.2.1 | **起動時処理** | 71d? | 2008-02-08 A | 2008-04-18 |  | 81% | 13.6d? | 83d |  |  | 2152h | 1707.2h |
| 107 | 9.1.2.1.1 | **鍵の引渡し** | 8d? | 2008-03-24 A | 2008-03-31 A |  | 100% |  |  |  | 吉田光寿 | 144h | 144h |
| 108 | 9.1.2.1.1.1 | AES鍵・AES種引渡し | 6d? | 2008-03-24 A | 2008-03-31 A |  | 100% |  |  |  | 吉岡照幸 | 48h | 48h |
| 109 | 9.1.2.1.1.2 | ハードウェアAESスロット設定・クリア | 6d? | 2008-03-24 A | 2008-03-31 A |  | 100% |  |  |  | 吉岡照幸 | 48h | 48h |
| 110 | 9.1.2.1.2 | NANDファイルのアクセス制限 | 38d | 2008-02-11 A | 2008-04-02 A |  | 100% |  |  |  | 吉岡照幸 | 304h | 304h |
| 111 | 9.1.2.1.3 | カード電源状態 | 15d | 2008-02-08 | 2008-02-28 |  |  |  | 133d |  | 赤羽淳平 | 120h |  |
| 112 | 9.1.2.1.4 | カード活線挿抜可否 | 15d | 2008-02-08 A | 2008-02-28 A |  | 100% |  |  |  | 中島高伸 | 120h | 120h |
| 113 | 9.1.2.1.5 | SDカードアクセス可否 | 15d | 2008-02-11 A | 2008-02-29 A |  | 100% |  |  |  | 中島高伸 | 120h | 120h |
| 114 | 9.1.2.1.6 | Codecモード切替 | 15d | 2008-02-11 A | 2008-03-02 A |  | 100% |  |  |  | 中島高伸 | 120h | 120h |
| 115 | 9.1.2.1.7 | SCFGレジスタロック（ユーザーアプリは必ず） | 15d | 2008-02-11 A | 2008-03-02 A |  | 100% |  |  |  | 中島高伸 | 120h | 120h |
| 116 | 9.1.2.1.8 | アプリ再配置 | 15d | 2008-02-11 A | 2008-03-02 A |  | 100% |  |  |  | 吉田光寿 | 120h | 120h |
| 117 | 9.1.2.1.9 | メモリクリア | 15d | 2008-02-08 A | 2008-02-28 A |  | 100% |  |  |  | 中島高伸; 吉田光寿 | 240h | 240h |
| 118 | 9.1.2.1.10 | アプリロード速度チューニング | 10d? | 2008-03-03 | 2008-03-14 |  |  |  | 116d | start no earlier than 2008-03-03 | 吉田光寿; 村上豊 | 160h |  |
| 119 | 9.1.2.1.11 | **レジスタクリア** | 61d | 2008-02-18 A | 2008-04-18 |  | 72% | 17.21d | 83d |  |  | 584h | 419.2h |
| 120 | 9.1.2.1.11.1 | 各ハード担当者にクリアする領域を洗い出してもらう | 43d | 2008-02-18 A | 2008-04-16 | 19 | 80% | 8.6d | 85d | finish no earlier than 2008-04-16 | 吉岡照幸 | 344h | 275.2h |
| 121 | 9.1.2.1.11.2 | クリア処理実装 | 30d | 2008-03-10 A | 2008-04-18 |  | 60% | 12d | 83d | finish no earlier than 2008-04-18 | 中島高伸 | 240h | 144h |
| 122 | 9.1.2.2 | **アプリ認証処理** | 62d? | 2008-02-08 A | 2008-04-09 |  | 65% | 21.97d? | 92d |  |  | 824h | 532h |
| 123 | 9.1.2.2.1 | **NTRアプリのR4対策** | 51d? | 2008-02-08 A | 2008-03-30 |  | 6% | 47.73d? | 103d |  |  | 312h | 20h |
| 124 | 9.1.2.2.1.1 | **ダイジェストとるやつ** | 51d? | 2008-02-08 A | 2008-03-30 |  | 6% | 47.73d? | 103d |  |  | 312h | 20h |
| 125 | 9.1.2.2.1.1.1 | 基本アルゴリズム実装 | 1d? | 2008-02-08 A | 2008-02-08 A |  | 100% |  |  |  | 村上豊 | 8h | 8h |
| 126 | 9.1.2.2.1.1.2 | ダイジェストリスト作成 | 3d | 2008-03-26 A | 2008-03-30 | 19, 22SF | 50% | 1.5d | 103d |  | 村上豊 | 24h | 12h |
| 127 | 9.1.2.2.1.1.3 | TWL側実装 | 35d | 2008-02-11 | 2008-03-30 | 19, 22SF |  |  | 102d |  | 村上豊 | 280h |  |
| 128 | 9.1.2.2.2 | **TWLアプリ** | 59d? | 2008-02-11 A | 2008-04-09 A |  | 100% |  |  |  |  | 512h | 512h |
| 129 | 9.1.2.2.2.1 | AESデコード | 4d? | 2008-04-04 A | 2008-04-09 A |  | 100% |  |  | finish no earlier than 2008-04-09 | 吉田光寿 | 32h | 32h |
| 130 | 9.1.2.2.2.2 | カードアプリ | 15d | 2008-02-11 A | 2008-03-02 A | 19, 20SF | 100% |  |  | finish no earlier than 2008-02-22 | 吉田光寿 | 120h | 120h |
| 131 | 9.1.2.2.2.3 | NANDアプリ | 15d | 2008-02-11 A | 2008-03-02 A | 19, 20SF | 100% |  |  | finish no earlier than 2008-02-22 | 吉田光寿 | 120h | 120h |
| 132 | 9.1.2.2.2.4 | TMPブートアプリ | 10d? | 2008-02-18 A | 2008-03-02 A | 19, 20SF | 100% |  |  | finish no earlier than 2008-03-02 | 吉田光寿 | 80h | 80h |
| 133 | 9.1.2.2.2.5 | NTRアプリ（PictChat,DS-DSプレイ） | 20d? | 2008-02-18 A | 2008-03-14 A | 19, 20SF | 100% |  |  | finish no earlier than 2008-03-14 | 吉田光寿 | 160h | 160h |

| ID | WBS | Task | Duration | Start | Finish | Predecessors | Complete | Remaining | Total slack | Constraint | Resources | Work | Actual work |
| --- | --- | --- | --- | --- | --- | --- | --- | --- | --- | --- | --- | --- | --- |
| 134 | 9.1.2.3 | **NTRアプリ起動** | 25d | 2008-02-11 A | 2008-03-06 A |  | 100% |  |  |  |  | 304h | 304h |
| 135 | 9.1.2.3.1 | NTRモード切替 | 19d | 2008-02-11 A | 2008-03-06 A | 117FF, 119FF, 21SF | 100% |  |  |  | 中島高伸 | 152h | 152h |
| 136 | 9.1.2.3.2 | NTR無線パッチ | 19d | 2008-02-11 A | 2008-03-06 A | 19, 21SF | 100% |  |  | start no earlier than 2008-02-08 | 中島高伸 | 152h | 152h |
| 137 | 9.1.3 | **アプリジャンプ** | 68d | 2008-02-11 A | 2008-04-18 |  | 90% | 6.8d | 83d |  |  | 368h | 360h |
| 138 | 9.1.3.1 | **任意アプリの直接起動** | 68d | 2008-02-11 A | 2008-04-18 |  | 97% | 2.19d | 83d |  |  | 248h | 240h |
| 139 | 9.1.3.1.1 | 未ロード状態のアプリ起動 | 15d | 2008-02-11 A | 2008-03-02 A | 19, 20SF | 100% |  |  |  | 吉田光寿 | 120h | 120h |
| 140 | 9.1.3.1.2 | NANDのImport（本来はTMP）フォルダに一時格納された状態のアプリ起動 | 15d | 2008-02-11 A | 2008-03-02 A | 19, 20SF | 100% |  |  |  | 吉田光寿 | 120h | 120h |
| 141 | 9.1.3.1.3 | ImportフォルダからTMPフォルダへの一時格納場所変更（ES待ち） | 1d | 2008-04-18 | 2008-04-18 | 266 |  |  | 83d | finish no earlier than 2008-04-18 | 吉田光寿 | 8h |  |
| 142 | 9.1.3.2 | ラッパーAPI作成 | 4d | 2008-03-07 | 2008-03-10 |  |  |  | 122d | finish no earlier than 2008-03-10 |  |  |  |
| 143 | 9.1.3.3 | ランチャーメニューに戻る | 15d | 2008-02-11 A | 2008-03-02 A | 19, 20SF | 100% |  |  |  | 吉田光寿 | 120h | 120h |
| 144 | 9.1.4 | Hot/Coldスタート判定 | 15d | 2008-02-11 A | 2008-03-02 | 19, 20SF | 80% | 3d | 131d |  | 中島高伸; 吉田光寿 | 240h | 192h |
| 145 | 9.1.5 | TMP（ESのバグのためImport）フォルダクリーン | 15d | 2008-02-11 A | 2008-03-02 A | 19, 20SF | 100% |  |  |  | 吉田光寿 | 120h | 120h |
| 146 | 9.1.6 | TMPフォルダクリーン | 1d | 2008-03-31 A | 2008-03-31 A | 266 | 100% |  |  |  | 吉田光寿 | 8h | 8h |
| 147 | 9.1.7 | 本体設定データetcのロード | 15d | 2008-03-17 A | 2008-04-04 A | 19, 20SF | 100% |  |  |  | 吉岡照幸 | 120h | 120h |
| 148 | 9.1.8 | RTC初期化 | 15d | 2008-02-11 A | 2008-03-02 A | 19, 20SF | 100% |  |  |  | 吉岡照幸 | 120h | 120h |
| 149 | 9.1.9 | 初回バックライトON | 15d | 2008-02-11 A | 2008-03-02 A | 19, 20SF | 100% |  |  |  | 吉岡照幸 | 120h | 120h |
| 150 | 9.1.10 | **無線** | 64d? | 2008-02-08 A | 2008-04-11 |  | 58% | 26.88d? | 90d |  |  | 480h | 356h |
| 151 | 9.1.10.1 | **新無線ファームロード** | 43d? | 2008-02-08 A | 2008-03-21 |  | 75% | 10.94d? | 111d |  |  | 464h | 348h |
| 152 | 9.1.10.1.1 | ダミーROMヘッダ作成ツール | 1d | 2008-02-08 A | 2008-02-08 A |  | 100% |  |  |  | 宮本昌幸 | 8h | 8h |
| 153 | 9.1.10.1.2 | **ファーム** | 32d? | 2008-02-08 A | 2008-03-10 |  | 60% | 12.67d? | 122d |  |  | 200h | 124h |
| 154 | 9.1.10.1.2.1 | ファーム作成 | 19d? | 2008-02-08 A | 2008-03-05 |  | 50% | 9.5d? | 127d | finish no earlier than 2008-03-05 | Atheros | 152h | 76h |
| 155 | 9.1.10.1.2.2 | **NAND保存フォーマットに変換** | 15d? | 2008-02-25 A | 2008-03-10 A |  | 100% |  |  |  |  | 48h | 48h |
| 156 | 9.1.10.1.2.2.1 | 仕様策定 | 1d | 2008-03-03 A | 2008-03-03 A |  | 100% |  |  |  | 佐藤雅樹; 吉岡照幸 | 16h | 16h |
| 157 | 9.1.10.1.2.2.2 | 旧フォーマット実装 | 2d? | 2008-02-25 A | 2008-02-26 A |  | 100% |  |  |  | 佐藤雅樹 | 16h | 16h |
| 158 | 9.1.10.1.2.2.3 | 新フォーマット実装 | 2d | 2008-03-07 A | 2008-03-10 A |  | 100% |  |  | start no earlier than 2008-03-07 | 佐藤雅樹 | 16h | 16h |

| ID | WBS | Task | Duration | Start | Finish | Predecessors | Complete | Remaining | Total slack | Free slack | Constraint | Resources | Work | Actual work |
| --- | --- | --- | --- | --- | --- | --- | --- | --- | --- | --- | --- | --- | --- | --- |
| 159 | 9.1.10.1.3 | **実装** | 43d? | 2008-02-08 A | 2008-03-21 |  | 84% | 6.72d? | 111d |  |  |  | 256h | 216h |
| 160 | 9.1.10.1.3.1 | 無線ライブラリ | 12d? | 2008-02-08 A | 2008-02-25 A |  | 100% |  |  |  | start no earlier than 2008-02-08 | 佐藤雅樹 | 96h | 96h |
| 161 | 9.1.10.1.3.2 | ランチャー仮実装 | 15d | 2008-02-11 A | 2008-03-02 A | 19, 20SF | 100% |  |  |  | start no earlier than 2008-02-08 | 宮本昌幸 | 120h | 120h |
| 162 | 9.1.10.1.3.3 | ランチャー本実装 | 5d? | 2008-03-17 | 2008-03-21 | 234 |  |  | 109d |  | start no earlier than 2008-03-10 | 宮本昌幸 | 40h |  |
| 163 | 9.1.10.2 | **無線終端処理** | 1d? | 2008-02-08 A | 2008-02-08 |  | 50% | 0.5d? | 153d |  |  |  | 16h | 8h |
| 164 | 9.1.10.2.1 | 無線ライブラリ | 1d? | 2008-02-08 A | 2008-02-08 A |  | 100% |  |  |  |  | 佐藤雅樹 | 8h | 8h |
| 165 | 9.1.10.2.2 | ランチャー実装 | 1d? | 2008-02-08 | 2008-02-08 |  |  |  | 153d |  |  | 吉田光寿 | 8h |  |
| 166 | 9.1.10.3 | 無線ON/OFFフラグ制御 | 8d | 2008-04-04 | 2008-04-11 |  |  |  | 90d |  | finish no earlier than 2008-04-11 |  |  |  |
| 167 | 9.1.10.4 | 無線LED制御 | 8d | 2008-04-04 | 2008-04-11 |  |  |  | 90d |  | finish no earlier than 2008-04-11 |  |  |  |
| 168 | 9.1.11 | アプリリスト取得 | 15d | 2008-02-11 A | 2008-03-02 | 19, 20SF | 70% | 4.5d | 131d |  |  | 吉田光寿 | 120h | 84h |
| 169 | 9.1.12 | **バナー** | 33d? | 2008-02-11 A | 2008-03-14 A |  | 100% |  |  |  |  |  | 496h | 496h |
| 170 | 9.1.12.1 | バナードライバ | 15d | 2008-02-11 A | 2008-03-02 A | 19, 20SF | 100% |  |  |  |  | 吉田光寿 | 120h | 120h |
| 171 | 9.1.12.2 | サブバナー | 17d? | 2008-02-21 A | 2008-03-14 A |  | 100% |  |  |  | start no earlier than 2008-02-21 | 吉田光寿 | 136h | 136h |
| 172 | 9.1.12.3 | サブバナーファイル（FSレイヤ） | 15d | 2008-02-11 A | 2008-03-02 A | 19, 20SF | 100% |  |  |  |  | 畠本 稔; 吉崎 浩二 | 240h | 240h |
| 173 | 9.1.13 | **活線挿抜** | 55d? | 2008-02-08 A | 2008-04-02 |  | 60% | 21.84d? | 99d |  |  |  | 1632h | 984h |
| 174 | 9.1.13.1 | **活線挿抜アルゴリズムをFIX** | 33d | 2008-02-11 A | 2008-03-14 |  | 70% | 9.9d | 104d | 2d |  |  | 400h | 280h |
| 175 | 9.1.13.1.1 | コードの整理 | 25d | 2008-02-11 A | 2008-03-14 | 19, 20SF | 70% | 7.5d | 104d |  | finish no earlier than 2008-03-14 | 赤羽淳平 | 200h | 140h |
| 176 | 9.1.13.1.2 | 挿抜負荷耐性 | 25d | 2008-02-11 A | 2008-03-14 | 19, 20SF | 70% | 7.5d | 104d |  | finish no earlier than 2008-03-14 | 赤羽淳平 | 200h | 140h |
| 177 | 9.1.13.2 | **ロード** | 55d? | 2008-02-08 A | 2008-04-02 |  | 57% | 23.57d? | 99d |  |  |  | 1232h | 704h |
| 178 | 9.1.13.2.1 | NTRカード対応 | 15d | 2008-02-11 A | 2008-03-02 A | 19, 20SF | 100% |  |  |  |  | 赤羽淳平 | 120h | 120h |
| 179 | 9.1.13.2.2 | TWLカード対応 | 15d | 2008-03-13 | 2008-04-02 | 19, 20SF |  |  | 99d |  | finish no earlier than 2008-04-02 | 赤羽淳平 | 120h |  |
| 180 | 9.1.13.2.3 | カードType1,Type2対応 | 15d | 2008-02-11 A | 2008-03-02 A | 19, 20SF | 100% |  |  |  | finish no earlier than 2008-02-29 | 赤羽淳平 | 120h | 120h |
| 181 | 9.1.13.2.4 | **Blowfishデコード** | 20d | 2008-02-11 A | 2008-03-02 A |  | 100% |  |  |  |  |  | 240h | 240h |
| 182 | 9.1.13.2.4.1 | カードのコマンド | 15d | 2008-02-11 A | 2008-03-02 A | 19, 20SF | 100% |  |  |  | finish no earlier than 2008-02-29 | 赤羽淳平 | 120h | 120h |
| 183 | 9.1.13.2.4.2 | SRLの先頭2KB | 15d | 2008-02-11 A | 2008-03-02 A | 19, 20SF | 100% |  |  |  |  | 赤羽淳平 | 120h | 120h |

| ID | WBS | Task | Duration | Start | Finish | Predecessors | Complete | Remaining | Total slack | Free slack | Constraint | Resources | Work | Actual work |
| --- | --- | --- | --- | --- | --- | --- | --- | --- | --- | --- | --- | --- | --- | --- |
| 184 | 9.1.13.2.5 | **AESデコード** | 36d? | 2008-02-08 | 2008-03-14 |  |  |  | 118d |  |  |  | 208h |  |
| 185 | 9.1.13.2.5.1 | デコード処理 | 26d? | 2008-02-08 | 2008-03-14 |  |  |  | 118d |  | finish no earlier than 2008-03-14 | 赤羽淳平 | 208h |  |
| 186 | 9.1.13.2.6 | **Blowfish鍵管理** | 2d? | 2008-03-06 A | 2008-03-07 A |  | 100% |  |  |  |  |  | 16h | 16h |
| 187 | 9.1.13.2.6.1 | Blowfish鍵の受け渡し | 1d | 2008-03-06 A | 2008-03-06 A | 19, 20SF | 100% |  |  |  | start no earlier than 2008-03-06 | 中島高伸 | 8h | 8h |
| 188 | 9.1.13.2.6.2 | 受け渡された鍵の使用 | 1d? | 2008-03-07 A | 2008-03-07 A | 187 | 100% |  |  |  |  | 赤羽淳平 | 8h | 8h |
| 189 | 9.1.13.2.7 | カードスロットAでの動作 | 1d? | 2008-02-08 A | 2008-02-08 A |  | 100% |  |  |  |  | 赤羽淳平 | 8h | 8h |
| 190 | 9.1.13.2.8 | DMAの使用 | 10d? | 2008-03-03 A | 2008-03-14 A |  | 100% |  |  |  | finish no earlier than 2008-03-14 | 赤羽淳平 | 80h | 80h |
| 191 | 9.1.13.2.9 | 表示との連動 | 15d | 2008-02-11 A | 2008-03-02 | 19, 20SF | 50% | 7.5d | 131d |  | start no earlier than 2008-02-08 | 赤羽淳平 | 120h | 60h |
| 192 | 9.1.13.2.10 | 起動との連動 | 15d | 2008-02-11 A | 2008-03-02 | 19, 20SF | 50% | 7.5d | 131d |  | start no earlier than 2008-02-08 | 赤羽淳平 | 120h | 60h |
| 193 | 9.1.13.2.11 | 速度チューニング | 10d | 2008-03-17 | 2008-03-28 | 174, 21SF |  |  | 102d |  | finish no earlier than 2008-02-29 | 赤羽淳平 | 80h |  |
| 194 | 9.1.14 | **ホットスポットサーチ** | 20d | 2008-02-11 A | 2008-03-02 |  | 53% | 9.33d | 131d |  |  |  | 120h | 64h |
| 195 | 9.1.14.1 | ライブラリ作成 | 10d | 2008-02-11 A | 2008-02-22 | 19 | 80% | 2d | 132d | 2d | start no earlier than 2008-02-08 | ネットワーク開発部 | 80h | 64h |
| 196 | 9.1.14.2 | ランチャーへの組み込み | 5d | 2008-02-25 | 2008-03-02 | 195, 20SF |  |  | 130d |  |  | 吉田光寿 | 40h |  |
| 197 | 9.1.15 | バッテリエクステンション | 10d | 2008-03-31 A | 2008-04-11 A | 69, 21SF | 100% |  |  |  | finish no earlier than 2008-02-29 | 村上豊 | 80h | 80h |
| 198 | 9.1.16 | **ISデバッガ対応** | 83d? | 2008-02-08 A | 2008-04-30 |  | 73% | 22.28d? | 71d |  |  |  | 1992h | 1228h |
| 199 | 9.1.16.1 | 開発サポート | 58d | 2008-02-11 A | 2008-04-30 | 7FF | 50% | 29d | 71d |  | finish no earlier than 2008-04-30 | 中島高伸 | 464h | 232h |
| 200 | 9.1.16.2 | 安定度を上げる | 58d | 2008-02-11 A | 2008-04-30 | 19, 20SF | 50% | 29d | 71d |  | finish no earlier than 2008-04-30 | 中島高伸 | 464h | 232h |
| 201 | 9.1.16.3 | アプリジャンプ対応 | 25d | 2008-02-11 A | 2008-03-16 | 19, 21SF | 30% | 17.5d | 117d |  | finish no earlier than 2008-02-29 | 吉岡照幸 | 200h | 60h |
| 202 | 9.1.16.4 | NANDファイルシステム終了処理 | 1d? | 2008-02-08 | 2008-02-08 |  |  |  | 153d |  |  |  |  |  |
| 203 | 9.1.16.5 | NTRモードデバッグ | 38d | 2008-02-11 A | 2008-04-02 A | 19, 21SF | 100% |  |  |  | start no earlier than 2008-02-08 | 中島高伸 | 304h | 304h |
| 204 | 9.1.16.6 | TWL-HYBアプリのNTRモードデバッグ | 55d? | 2008-02-08 A | 2008-04-02 A |  | 100% |  |  |  |  |  |  |  |
| 205 | 9.1.16.7 | バナーViewモード対応 | 1d? | 2008-02-08 | 2008-02-08 |  |  |  | 153d |  |  |  |  |  |
| 206 | 9.1.16.8 | TLFモードフラグ対応（署名やAESチェックを無効にする） | 55d? | 2008-02-08 A | 2008-04-02 A |  | 100% |  |  |  |  |  |  |  |
| 207 | 9.1.16.9 | **NANDアプリデバッグ** | 48d | 2008-02-11 A | 2008-03-30 |  | 71% | 13.71d | 103d |  |  |  | 560h | 400h |
| 208 | 9.1.16.9.1 | 暫定対応 | 25d | 2008-02-11 A | 2008-03-16 A | 19, 21SF | 100% |  |  |  |  | 中島高伸; 吉岡照幸 | 400h | 400h |
| 209 | 9.1.16.9.2 | 本対応 | 10d | 2008-03-17 | 2008-03-30 | 208, 22SF |  |  | 102d |  |  | 中島高伸; 吉岡照幸 | 160h |  |

| ID | WBS | Task | Duration | Start | Finish | Predecessors | Complete | Remaining | Total slack | Free slack | Constraint | Resources | Work | Actual work |
| --- | --- | --- | --- | --- | --- | --- | --- | --- | --- | --- | --- | --- | --- | --- |
| 210 | 9.2 | **本体設定** | 64d? | 2008-02-08 A | 2008-04-11 |  | 87% | 8.12d? | 90d |  |  |  | 312h | 286.4h |
| 211 | 9.2.1 | 実装 | 1d? | 2008-02-08 A | 2008-02-08 |  | 80% | 0.2d? | 153d |  |  | 吉田光寿 | 8h | 6.4h |
| 212 | 9.2.2 | ペアレンタルコントロール設定（仕様確定待ち） | 8d? | 2008-02-21 A | 2008-03-03 A |  | 100% |  |  |  | finish no earlier than 2008-03-03 | 西川猛司 | 64h | 64h |
| 213 | 9.2.3 | 無線ON/OFFフラグ制御 | 1d? | 2008-04-11 | 2008-04-11 |  |  |  | 90d |  | start no earlier than 2008-04-11 |  |  |  |
| 214 | 9.2.4 | **本体初期化** | 23d? | 2008-02-08 A | 2008-03-02 |  | 87% | 2.97d? | 131d |  |  |  | 240h | 216h |
| 215 | 9.2.4.1 | ツール（NandInitializer） | 15d | 2008-02-11 A | 2008-03-02 A | 19, 20SF | 100% |  |  |  |  | 神川洋司 | 120h | 120h |
| 216 | 9.2.4.2 | ライブラリ | 15d | 2008-02-11 A | 2008-03-02 | 19, 20SF | 80% | 3d | 131d |  |  | 神川洋司 | 120h | 96h |
| 217 | 9.2.4.3 | 本体設定での実装 | 1d? | 2008-02-08 | 2008-02-08 |  |  |  | 153d |  |  |  |  |  |
| 219 | 10 | NANDファーム | 38d | 2008-02-11 A | 2008-04-02 A | 19, 21SF | 100% |  |  |  |  | 村上豊 | 304h | 304h |
| 221 | 11 | **TwlSDK** | 38d? | 2008-02-08 A | 2008-03-16 |  | 62% | 14.62d? | 116d |  |  |  | 2960h | 2052h |
| 222 | 11.1 | **ツール** | 37d? | 2008-02-08 A | 2008-03-16 |  | 29% | 26.31d? | 117d |  |  |  | 360h | 104h |
| 223 | 11.1.1 | **makerom.TWL** | 36d? | 2008-02-08 A | 2008-03-14 |  | 50% | 18d? | 118d |  |  |  | 112h | 56h |
| 224 | 11.1.1.1 | 領域チェック修正 | 1d | 2008-03-14 | 2008-03-14 | 19, 20SF |  |  | 118d |  | finish no earlier than 2008-03-14 | 吉岡照幸 | 8h |  |
| 225 | 11.1.1.2 | TWL領域用キーテーブル埋め込み | 1d | 2008-03-14 A | 2008-03-14 A | 19, 20SF | 100% |  |  |  | finish no earlier than 2008-03-14 | 吉岡照幸 | 8h | 8h |
| 226 | 11.1.1.3 | ペアレンタルコントロール対応 | 1d | 2008-03-14 | 2008-03-14 | 19, 20SF |  |  | 118d |  | finish no earlier than 2008-03-14 | 吉岡照幸 | 8h |  |
| 227 | 11.1.1.4 | TMPブート対応ビットの新設 | 1d? | 2008-02-08 A | 2008-02-08 A |  | 100% |  |  |  |  | 吉岡照幸 | 8h | 8h |
| 228 | 11.1.1.5 | 鍵アクセスコントロール情報の新設 | 1d? | 2008-03-14 A | 2008-03-14 A | 19, 20SF | 100% |  |  |  | finish no earlier than 2008-03-14 | 吉岡照幸 | 8h | 8h |
| 229 | 11.1.1.6 | カードリージョン情報の新設 | 1d? | 2008-03-14 A | 2008-03-14 A | 19, 20SF | 100% |  |  |  | finish no earlier than 2008-03-14 | 吉岡照幸 | 8h | 8h |
| 230 | 11.1.1.7 | システムアプリ用makerom.TWL.sys | 1d | 2008-02-11 A | 2008-02-11 A | 19, 20SF | 100% |  |  |  |  | 吉岡照幸 | 8h | 8h |
| 231 | 11.1.1.8 | セキュアアプリ用makerom.TWL.secure | 1d? | 2008-02-08 A | 2008-02-08 A |  | 100% |  |  |  |  | 吉岡照幸 | 8h | 8h |
| 232 | 11.1.1.9 | ランチャー用makerom.TWL.launcher | 1d? | 2008-02-08 A | 2008-02-08 A |  | 100% |  |  |  |  | 吉岡照幸 | 8h | 8h |
| 233 | 11.1.1.10 | NTR-SRL署名対応特別版 | 5d | 2008-03-10 | 2008-03-14 | 19, 20SF |  |  | 116d |  | finish no earlier than 2008-03-14 | 吉岡照幸 | 40h |  |
| 234 | 11.1.2 | **maketad** | 34d | 2008-02-11 | 2008-03-16 |  |  |  | 109d | 1d |  |  | 200h |  |
| 235 | 11.1.2.1 | バイナリファイル対応 | 25d | 2008-02-11 | 2008-03-16 | 19, 21SF |  |  | 109d |  |  | 大島 洋一 | 200h |  |

| ID | WBS | Task | Duration | Start | Finish | Predecessors | Complete | Remaining | Total slack | Constraint | Resources | Work | Actual work |
| --- | --- | --- | --- | --- | --- | --- | --- | --- | --- | --- | --- | --- | --- |
| 236 | 11.1.3 | **makebanner.TWL** | 22d? | 2008-02-08 A | 2008-02-29 A |  | 100% |  |  |  |  | 40h | 40h |
| 237 | 11.1.3.1 | NTRアイコンIN→TWLバナーOUT対応 | 4d | 2008-02-08 A | 2008-02-13 A | 19, 20SF | 100% |  |  |  | 吉岡照幸 | 32h | 32h |
| 238 | 11.1.3.2 | サブバナー対応 | 1d? | 2008-02-29 A | 2008-02-29 A | 19, 20SF | 100% |  |  | start no earlier than 2008-02-29 | 吉岡照幸 | 8h | 8h |
| 239 | 11.1.4 | bannercvtr | 1d | 2008-02-08 A | 2008-02-08 A | 19, 21SF | 100% |  |  |  | 遠藤高志 | 8h | 8h |
| 240 | 11.2 | **ライブラリ** | 35d | 2008-02-11 A | 2008-03-16 |  | 67% | 11.41d | 116d |  |  | 2600h | 1948h |
| 241 | 11.2.1 | reboot | 15d | 2008-02-11 A | 2008-03-02 | 19, 20SF | 90% | 1.5d | 131d |  | 中島高伸 | 120h | 108h |
| 242 | 11.2.2 | os/launcherParam | 15d | 2008-02-11 A | 2008-03-02 | 19, 20SF | 90% | 1.5d | 131d |  | 吉田光寿 | 120h | 108h |
| 243 | 11.2.3 | lcfg | 15d | 2008-02-11 A | 2008-03-02 | 19, 20SF | 90% | 1.5d | 131d |  | 吉岡照幸 | 120h | 108h |
| 244 | 11.2.4 | nam | 25d | 2008-02-11 A | 2008-03-16 | 19, 21SF | 90% | 2.5d | 117d |  | 畠本 稔 | 200h | 180h |
| 245 | 11.2.5 | マイコン | 15d | 2008-02-11 A | 2008-03-02 A | 19, 20SF | 100% |  |  |  | 村上豊 | 120h | 120h |
| 246 | 11.2.6 | カメラ | 25d | 2008-02-11 A | 2008-03-16 | 19, 21SF | 70% | 7.5d | 117d |  | 村上豊 | 200h | 140h |
| 247 | 11.2.7 | Codec | 15d | 2008-02-11 A | 2008-03-02 | 19, 20SF | 70% | 4.5d | 131d |  | 神川洋司 | 120h | 84h |
| 248 | 11.2.8 | **FS** | 35d | 2008-02-11 A | 2008-03-16 |  | 50% | 17.5d | 116d |  |  | 1600h | 1100h |
| 249 | 11.2.8.1 | 電源OFF,リセット時の終端処理 | 25d | 2008-02-11 | 2008-03-16 | 19, 21SF |  |  | 116d | finish no earlier than 2008-03-16 | 吉崎 浩二 | 200h |  |
| 250 | 11.2.8.2 | FSのAES暗号化 | 25d | 2008-02-11 A | 2008-03-16 A | 19, 21SF | 100% |  |  |  | 白井達広; 村上豊 | 400h | 400h |
| 251 | 11.2.8.3 | 速度チューニング | 25d | 2008-02-11 | 2008-03-16 | 19, 21SF |  |  | 116d |  | 吉崎 浩二 | 200h |  |
| 252 | 11.2.8.4 | SRLのハッシュチェック | 25d | 2008-02-11 A | 2008-03-16 | 19, 21SF | 50% | 12.5d | 117d |  | 吉崎 浩二 | 200h | 100h |
| 253 | 11.2.8.5 | NANDアクセス権管理 | 25d | 2008-02-11 A | 2008-03-16 A | 19, 21SF | 100% |  |  |  | 吉崎 浩二; 吉岡照幸; 廣瀬 和樹 | 600h | 600h |
| 255 | 12 | **WiFi関係ライブラリ** | 36d? | 2008-02-08 A | 2008-03-14 |  | 85% | 5.51d? | 118d |  |  | 616h | 553.6h |
| 256 | 12.1 | ncfgライブラリ | 1d? | 2008-02-08 A | 2008-02-08 A |  | 100% |  |  |  | 清木 昌 | 8h | 8h |
| 257 | 12.2 | WPAを使ったAOSSの接続情報の保存 | 1d? | 2008-02-08 | 2008-02-08 |  |  |  | 153d |  | Buffalo外注 | 8h |  |
| 258 | 12.3 | WPAを使ったらくらくの接続情報の保存 | 1d? | 2008-02-08 | 2008-02-08 |  |  |  | 153d |  | NEC外注 | 8h |  |
| 259 | 12.4 | **ACライブラリ** | 29d? | 2008-02-08 A | 2008-03-07 |  | 77% | 6.63d? | 125d |  |  | 168h | 129.6h |
| 260 | 12.4.1 | 1stリリース | 9d? | 2008-02-08 A | 2008-02-20 A |  | 100% |  |  | start no earlier than 2008-02-08 | ネットワーク開発部 | 72h | 72h |
| 261 | 12.4.2 | FIX | 12d | 2008-02-21 A | 2008-03-07 | 260 | 60% | 4.8d | 125d | start no earlier than 2008-02-21 | ネットワーク開発部 | 96h | 57.6h |
| 262 | 12.5 | WiFi設定移行 | 1d? | 2008-02-08 | 2008-02-08 |  |  |  | 153d |  | ネットワーク開発部 | 8h |  |
| 263 | 12.6 | WiFi設定ユーティリティ | 26d? | 2008-02-08 A | 2008-03-14 A |  | 100% |  |  | finish no earlier than 2008-03-14 | 安達 洋明; 清木 昌 | 416h | 416h |

| ID | WBS | Task | Duration | Start | Finish | Predecessors | Complete | Remaining | Total slack | Free slack | Constraint | Resources | Work | Actual work |
| --- | --- | --- | --- | --- | --- | --- | --- | --- | --- | --- | --- | --- | --- | --- |
| 265 | 13 | **eTicket** | 84d? | 2008-02-08 A | 2008-05-01 |  | 35% | 54.64d? | 70d |  |  |  | 2064h | 764.8h |
| 266 | 13.1 | **ESライブラリ** | 50d? | 2008-02-08 A | 2008-03-28 |  | 60% | 20d? | 103d | 20d |  |  | 864h | 489.6h |
| 267 | 13.1.1 | 実装 | 36d? | 2008-02-08 A | 2008-03-28 |  | 70% | 10.8d? | 103d |  | finish no earlier than 2008-03-28 | BroadOn | 288h | 201.6h |
| 268 | 13.1.2 | 検証 | 36d? | 2008-02-08 A | 2008-03-28 |  | 50% | 18d? | 103d |  | finish no earlier than 2008-03-28 | 大島 洋一; 畠本 稔 | 576h | 288h |
| 269 | 13.2 | **NUPライブラリ** | 50d? | 2008-02-08 A | 2008-03-28 |  | 20% | 40d? | 104d |  |  |  | 576h | 115.2h |
| 270 | 13.2.1 | 実装 | 36d? | 2008-02-08 A | 2008-03-28 |  | 20% | 28.8d? | 104d |  | finish no earlier than 2008-03-28 | BroadOn | 288h | 57.6h |
| 271 | 13.2.2 | 検証 | 36d? | 2008-02-08 A | 2008-03-28 |  | 20% | 28.8d? | 104d |  | finish no earlier than 2008-03-28 | 稲葉 公崇 | 288h | 57.6h |
| 272 | 13.3 | **CLSサーバ** | 84d | 2008-02-08 A | 2008-05-01 |  | 18% | 69d | 70d |  |  |  | 224h | 40h |
| 273 | 13.3.1 | 開発用セットアップ | 5d | 2008-02-08 A | 2008-02-14 A | 19, 20SF | 100% |  |  |  |  | 畠本 稔 | 40h | 40h |
| 274 | 13.3.2 | 製品用セットアップ | 23d | 2008-04-01 | 2008-05-01 | 19, 22SF |  |  | 70d |  | start no earlier than 2008-04-01 | 畠本 稔 | 184h |  |
| 275 | 13.4 | **NUPサーバ** | 48d | 2008-02-11 A | 2008-03-30 |  | 30% | 33.6d | 103d |  |  |  | 400h | 120h |
| 276 | 13.4.1 | 開発用セットアップ | 15d | 2008-02-11 A | 2008-03-02 A | 19, 20SF | 100% |  |  |  |  | ネットワーク開発部 | 120h | 120h |
| 277 | 13.4.2 | 製品用セットアップ | 35d | 2008-02-11 | 2008-03-30 | 19, 22SF |  |  | 102d |  |  | ネットワーク開発部 | 280h |  |
| 279 | 14 | **UIGシステムメニュー** | 19.5d? | 2008-04-11 | 2008-04-30 |  |  |  | 71d |  |  |  | 216h |  |
| 280 | 14.1 | REDシステムメニューとのマージ作業 | 13.5d? | 2008-04-11 | 2008-04-30 |  |  |  | 71d |  | finish no earlier than 2008-04-30 | 吉岡照幸; 吉田光寿 | 216h |  |
| 282 | 15 | **ROMマスター作成** | 83d? | 2008-02-08 A | 2008-04-30 |  | 61% | 32.78d? | 71d |  |  |  | 472h | 285.6h |
| 283 | 15.1 | ROMマスタリングツール | 51d? | 2008-02-08 A | 2008-04-18 |  | 70% | 15.3d? | 83d |  | finish no earlier than 2008-04-18 | 西川猛司 | 408h | 285.6h |
| 284 | 15.2 | TWLカードのTWL領域用キーテーブル生成ツール | 8d | 2008-04-21 | 2008-04-30 | 19, 22SF |  |  | 71d |  | start no earlier than 2008-04-21 | 中島高伸 | 64h |  |
| 286 | 16 | **デバッグ関係** | 22d? | 2008-04-09 | 2008-04-30 |  |  |  | 71d |  |  |  |  |  |
| 287 | 16.1 | デバッグ項目洗い出し | 22d? | 2008-04-09 | 2008-04-30 |  |  |  | 71d |  | finish no earlier than 2008-04-30 |  |  |  |
| 288 | 16.2 | 必要となるプログラム洗い出し | 4d? | 2008-04-21 | 2008-04-24 |  |  |  | 71d | 0d | start no earlier than 2008-04-21 |  |  |  |
| 289 | 16.3 | テストプログラム作成 | 6d? | 2008-04-25 | 2008-04-30 | 288 |  |  | 71d |  | finish no earlier than 2008-04-30 |  |  |  |
| 291 | 17 | **生産工程用プログラム** | 107d? | 2008-02-08 A | 2008-05-25 |  | 35% | 69.19d? | 47d |  |  |  | 728.95h | 212h |
| 292 | 17.1 | 必要となるプログラム洗い出し | 51d? | 2008-02-08 A | 2008-04-18 |  | 50% | 25.5d? | 83d |  | finish no earlier than 2008-04-18 | 製品技術部; 宮本昌幸; 吉岡照幸 | 536.95h | 204h |
| 293 | 17.2 | SDカードダイレクトブート | 1d? | 2008-04-02 A | 2008-04-02 A |  | 100% |  |  |  |  | 村上豊 | 8h | 8h |
| 294 | 17.3 | 生産工程用NandInitializer（NANDフォーマット、REDランチャーインポート） | 1d? | 2008-02-08 | 2008-02-08 |  |  |  | 153d |  |  | 神川洋司 | 8h |  |
| 295 | 17.4 | 生産工程用NandInitializer2（HW情報、リージョンなどの書き込み） | 1d? | 2008-02-08 | 2008-02-08 |  |  |  | 153d |  |  | 神川洋司 | 8h |  |
| 296 | 17.5 | 生産工程用NandInitializer3（内蔵アプリインポート） | 1d? | 2008-02-08 | 2008-02-08 |  |  |  | 153d |  |  | 神川洋司 | 8h |  |

| ID | WBS | Task | Duration | Start | Finish | Predecessors | Total slack | Free slack | Constraint | Resources | Work |
| --- | --- | --- | --- | --- | --- | --- | --- | --- | --- | --- | --- |
| 297 | 17.6 | **生産工程用RED仮ランチャー** | 34d | 2008-04-21 | 2008-05-25 |  | 47d |  |  |  | 160h |
| 298 | 17.6.1 | 仕様FIX | 10d | 2008-04-21 | 2008-05-02 |  | 53d | 9d | start no earlier than 2008-04-21 | 製品技術部 | 80h |
| 299 | 17.6.2 | 実装 | 10d | 2008-05-12 | 2008-05-25 | 298, 14SF-10d | 46d |  |  | ？ | 80h |
